# SCVI_cronograma_01

Schedule from MS Project, 2021-11-21 to 2022-01-11, costs in R$, A marks actual dates.

## Calendars

- Padrão: Mon-Fri 09:00-12:00, 13:00-18:00; Sat-Sun off.

## Resources

| Resource | Rate |
| --- | --- |
| Robson | 150 |
| Rodrigo | 150 |
| João | 150 |
| GP Externo | 200 |
| Cliente |  |
| Matheus | 150 |
| Joa |  |

## Schedule

| ID | WBS | Task | Type | Duration | Start | Finish | Predecessors | Complete | Remaining | Total slack | Constraint | Resources | Work | Actual work | Cost | Actual cost |
| --- | --- | --- | --- | --- | --- | --- | --- | --- | --- | --- | --- | --- | --- | --- | --- | --- |
| 1 | 1 | **Projeto SCVI** |  | 36.98d | 2021-11-21 09:00 A | 2022-01-11 17:50 |  | 71% | 10.66d | 0d |  |  | 268.5h | 158.25h | 40,208.33 | 24,187.5 |
| 2 | 1.1 | **Prospecção** |  | 36.98d | 2021-11-21 09:00 A | 2022-01-11 17:50 |  | 71% | 10.66d | 0d |  |  | 268.5h | 158.25h | 40,208.33 | 24,187.5 |
| 3 | 1.1.1 | **PTEC** |  | 3.62d | 2021-11-21 09:00 A | 2021-11-25 15:00 A |  | 100% |  |  |  |  | 26h | 26h | 3,900 | 3,900 |
| 4 | 1.1.1.1 | Estudar Domínio de Aplicação | manual | 1d | 2021-11-21 09:00 A | 2021-11-21 18:00 A |  | 100% |  |  |  | Robson | 8h | 8h | 1,200 | 1,200 |
| 5 | 1.1.1.2 | Reunir-se com Fornecedor de Requisitos | manual | 1d | 2021-11-22 09:00 A | 2021-11-22 18:00 A | 4 | 100% |  |  |  | Robson | 4h | 4h | 600 | 600 |
| 6 | 1.1.1.3 | Redigir Proposta Técnica | manual | 1.62d | 2021-11-23 09:00 A | 2021-11-24 15:00 A | 5 | 100% |  |  |  | João | 13h | 13h | 1,950 | 1,950 |
| 7 | 1.1.1.4 | Revisar Proposta Técnica | manual | 1d | 2021-11-24 15:00 A | 2021-11-25 15:00 A | 6 | 100% |  |  |  | Robson | 1h | 1h | 150 | 150 |
| 8 | 1.1.1.5 | Aprovar Proposta Técnica | milestone, manual | 0d | 2021-11-25 15:00 A | 2021-11-25 15:00 A | 7 | 100% |  |  |  | Cliente |  |  |  |  |
| 9 | 1.1.2 | **Est. Prel. Tam.** |  | 2d | 2021-11-25 15:00 A | 2021-11-29 15:00 A |  | 100% |  |  |  |  | 2h | 2h | 350 | 350 |
| 10 | 1.1.2.1 | Estimar Tamanho do Projeto | manual | 1d | 2021-11-25 15:00 A | 2021-11-26 15:00 A | 7 | 100% |  |  |  | Robson; Rodrigo | 1h | 1h | 150 | 150 |
| 11 | 1.1.2.2 | Revisar Estimativa de Tamanho do Projeto | manual | 1d | 2021-11-26 15:00 A | 2021-11-29 15:00 A | 10 | 100% |  |  |  | GP Externo | 1h | 1h | 200 | 200 |
| 12 | 1.1.3 | **Est. Prel. Cronograma e Orçamento** |  | 1d | 2021-11-29 15:00 A | 2021-11-30 15:00 A |  | 100% |  |  |  |  | 10h | 10h | 1,900 | 1,900 |
| 13 | 1.1.3.1 | Elaborar Cronograma e Orçamento Preliminares | manual | 1d | 2021-11-29 15:00 A | 2021-11-30 15:00 A | 9 | 100% |  |  |  | João | 2h | 2h | 300 | 300 |
| 14 | 1.1.3.2 | Revisar Cronograma e Orçamento Preliminares | manual | 1d | 2021-11-29 15:00 A | 2021-11-30 15:00 A | 11 | 100% |  |  |  | GP Externo | 8h | 8h | 1,600 | 1,600 |
| 15 | 1.1.4 | **Análise** |  | 3d | 2021-11-30 15:00 A | 2021-12-03 15:00 A |  | 100% |  |  |  |  | 35h | 35h | 5,250 | 5,250 |
| 16 | 1.1.4.1 | **Documento de Requisitos** |  | 3d | 2021-11-30 15:00 A | 2021-12-03 15:00 A |  | 100% |  |  |  |  | 27h | 27h | 4,050 | 4,050 |
| 17 | 1.1.4.1.1 | Reunir-se com o Cliente | manual | 1d | 2021-11-30 15:00 A | 2021-12-01 15:00 A | 12 | 100% |  |  |  | Robson | 8h | 8h | 1,200 | 1,200 |
| 18 | 1.1.4.1.2 | Elaborar DRE | manual | 1d | 2021-11-30 15:00 A | 2021-12-01 15:00 A | 13 | 100% |  |  |  | João | 8h | 8h | 1,200 | 1,200 |
| 19 | 1.1.4.1.3 | Revisar DRE | manual | 0.38d | 2021-11-30 15:00 A | 2021-11-30 18:00 A | 14 | 100% |  |  |  | Robson | 3h | 3h | 450 | 450 |
| 20 | 1.1.4.1.4 | Submeter para aprovação do Cliente | manual | 1d | 2021-12-01 15:00 A | 2021-12-03 15:00 A | 17 | 100% |  |  |  | Rodrigo | 8h | 8h | 1,200 | 1,200 |
| 21 | 1.1.4.2 | **MRB** |  | 1.38d | 2021-12-01 09:00 A | 2021-12-02 12:00 A |  | 100% |  |  |  |  | 8h | 8h | 1,200 | 1,200 |
| 22 | 1.1.4.2.1 | Elaborar MRB | manual | 0.75d | 2021-12-01 15:00 A | 2021-12-02 12:00 A | 18 | 100% |  |  |  | João | 6h | 6h | 900 | 900 |
| 23 | 1.1.4.2.2 | Revisar MRB | manual | 0.25d | 2021-12-01 09:00 A | 2021-12-02 10:30 A | 19 | 100% |  |  |  | Robson | 2h | 2h | 300 | 300 |
| 24 | 1.1.5 | **Projeto** |  | 6.06d | 2021-12-02 10:30 A | 2021-12-10 11:00 A |  | 100% |  |  |  |  | 26h | 26h | 3,900 | 3,900 |
| 25 | 1.1.5.1 | **Diagrama de Objetos** |  | 4.19d | 2021-12-03 16:30 A | 2021-12-09 18:00 A |  | 100% |  |  |  |  | 20h | 20h | 3,000 | 3,000 |
| 26 | 1.1.5.1.1 | Elaborar Diagrama de Objetos |  | 2d | 2021-12-03 16:30 A | 2021-12-07 16:30 A | 20 | 100% |  |  |  | Matheus | 16h | 16h | 2,400 | 2,400 |
| 27 | 1.1.5.1.2 | Revisar Diagrama de Objetos | manual | 0.25d | 2021-12-08 09:00 A | 2021-12-08 11:00 A | 21 | 100% |  |  |  | João | 2h | 2h | 300 | 300 |
| 28 | 1.1.5.1.3 | Atualizar MRB |  | 1d | 2021-12-09 09:00 A | 2021-12-09 18:00 A |  | 100% |  |  | start no earlier than 2021-12-09 09:00 | Rodrigo [25%] | 2h | 2h | 300 | 300 |

| ID | WBS | Task | Type | Duration | Start | Finish | Predecessors | Complete | Remaining | Total slack | Resources | Work | Actual work | Cost | Actual cost |
| --- | --- | --- | --- | --- | --- | --- | --- | --- | --- | --- | --- | --- | --- | --- | --- |
| 29 | 1.1.5.2 | **Modelo de Grafos** |  | 6.06d | 2021-12-02 10:30 A | 2021-12-10 11:00 A |  | 100% |  |  |  | 6h | 6h | 900 | 900 |
| 30 | 1.1.5.2.1 | Elaborar MG | manual | 0.5d | 2021-12-02 10:30 A | 2021-12-02 15:30 A | 23 | 100% |  |  | Matheus | 4h | 4h | 600 | 600 |
| 31 | 1.1.5.2.2 | Revisar MG | manual | 0.25d | 2021-12-10 09:00 A | 2021-12-10 11:00 A | 25 | 100% |  |  | João | 2h | 2h | 300 | 300 |
| 32 | 1.1.6 | **Desenvolvimento** |  | 15.56d | 2021-12-07 16:30 A | 2021-12-29 12:00 |  | 44% | 8.72d | 0d |  | 146.5h | 59.25h | 21,975 | 8,887.5 |
| 33 | 1.1.6.1 | **Release 01** |  | 8.62d | 2021-12-07 16:30 A | 2021-12-20 13:30 |  | 41% | 5.06d | 0d |  | 57.5h | 22.75h | 8,625 | 3,412.5 |
| 34 | 1.1.6.1.1 | **Implementação** |  | 8.62d | 2021-12-07 16:30 A | 2021-12-20 13:30 |  | 41% | 5.06d | 0d |  | 57.5h | 22.75h | 8,625 | 3,412.5 |
| 35 | 1.1.6.1.1.1 | **Implementação - Manter Usuário** |  | 4.31d | 2021-12-07 16:30 | 2021-12-14 10:00 |  |  |  | 0d |  | 23h |  | 3,450 |  |
| 36 | 1.1.6.1.1.1.1 | Implementação RFS Cadastrar Usuário | manual | 0.31d | 2021-12-07 16:30 | 2021-12-08 10:00 | 26 |  |  |  | Robson; Matheus | 5h |  | 750 |  |
| 37 | 1.1.6.1.1.1.2 | Implementação RFS Consultar Usuário | manual | 0.5d | 2021-12-08 11:00 | 2021-12-08 16:00 | 27 |  |  |  | Rodrigo | 4h |  | 600 |  |
| 38 | 1.1.6.1.1.1.3 | Implementação RFS Alterar Usuário | manual | 0.44d | 2021-12-10 15:00 | 2021-12-13 09:30 | 28 |  |  |  | Robson; Matheus | 7h |  | 1,050 |  |
| 39 | 1.1.6.1.1.1.4 | Implementação RFS Remover Usuário | manual | 0.88d | 2021-12-10 16:00 | 2021-12-14 10:00 | 29 |  |  |  | Rodrigo | 7h |  | 1,050 |  |
| 40 | 1.1.6.1.1.2 | **Implementação - Manter Corretor** |  | 4.88d | 2021-12-08 09:00 A | 2021-12-14 17:00 A |  | 100% |  |  |  | 16h | 16h | 2,400 | 2,400 |
| 41 | 1.1.6.1.1.2.1 | Implementação RFS Cadastrar Corretor | manual | 0.31d | 2021-12-08 09:00 A | 2021-12-08 11:30 A | 30 | 100% |  |  | Robson; Matheus | 5h | 5h | 750 | 750 |
| 42 | 1.1.6.1.1.2.2 | Implementação RFS Consultar Corretor | manual | 0.5d | 2021-12-10 11:00 A | 2021-12-10 16:00 A | 31 | 100% |  |  | Rodrigo | 4h | 4h | 600 | 600 |
| 43 | 1.1.6.1.1.2.3 | Implementação RFS Alterar Corretor | manual | 0.88d | 2021-12-08 16:00 A | 2021-12-14 17:00 A | 37 | 100% |  |  | Rodrigo; Matheus | 7h | 7h | 1,050 | 1,050 |
| 44 | 1.1.6.1.1.3 | **Teste - Manter Usuário** |  | 2.44d | 2021-12-13 09:30 | 2021-12-15 14:00 |  |  |  | 0d |  | 11h |  | 1,650 |  |
| 45 | 1.1.6.1.1.3.1 | Teste RFS Cadastrar Usuário | manual | 0.25d | 2021-12-13 09:30 | 2021-12-13 16:00 | 38 |  |  |  | João | 2h |  | 300 |  |
| 46 | 1.1.6.1.1.3.2 | Teste RFS Consultar Usuário | manual | 0.38d | 2021-12-14 10:00 | 2021-12-15 10:00 | 39 |  |  |  | Rodrigo | 3h |  | 450 |  |
| 47 | 1.1.6.1.1.3.3 | Teste RFS Alterar Usuário | manual | 0.25d | 2021-12-14 17:00 | 2021-12-15 10:30 | 40 |  |  |  | João | 2h |  | 300 |  |
| 48 | 1.1.6.1.1.3.4 | Teste RFS Remover Usuário | manual | 0.5d | 2021-12-15 09:00 | 2021-12-15 14:00 | 41 |  |  |  | Matheus | 4h |  | 600 |  |
| 49 | 1.1.6.1.1.4 | **Teste - Manter Corretor** |  | 4.25d | 2021-12-14 10:30 A | 2021-12-20 13:30 |  | 90% | 0.42d | 0d |  | 7.5h | 6.75h | 1,125 | 1,012.5 |
| 50 | 1.1.6.1.1.4.1 | Teste RFS Cadastrar Corretor | manual | 0.25d | 2021-12-14 10:30 A | 2021-12-14 13:30 | 42 | 90% | 0.03d |  | João | 2h | 1.8h | 300 | 270 |
| 51 | 1.1.6.1.1.4.2 | Teste RFS Consultar Corretor | manual | 0.19d | 2021-12-14 17:00 A | 2021-12-15 09:30 | 43 | 90% | 0.02d |  | João | 1.5h | 1.35h | 225 | 202.5 |
| 52 | 1.1.6.1.1.4.3 | Teste RFS Alterar Corretor | manual | 0.5d | 2021-12-17 09:00 A | 2021-12-20 13:30 | 44 | 90% | 0.05d |  | Robson | 4h | 3.6h | 600 | 540 |

| ID | WBS | Task | Type | Duration | Start | Finish | Predecessors | Complete | Remaining | Total slack | Resources | Work | Actual work | Cost | Actual cost |
| --- | --- | --- | --- | --- | --- | --- | --- | --- | --- | --- | --- | --- | --- | --- | --- |
| 53 | 1.1.6.2 | **Release 02** |  | 7.62d | 2021-12-14 13:30 A | 2021-12-24 09:30 |  | 67% | 2.48d | 0d |  | 54h | 36.5h | 8,100 | 5,475 |
| 54 | 1.1.6.2.1 | **Implementação** |  | 7.62d | 2021-12-14 13:30 A | 2021-12-24 09:30 |  | 67% | 2.48d | 0d |  | 54h | 36.5h | 8,100 | 5,475 |
| 55 | 1.1.6.2.1.1 | **Implementação - Manter Imóvel à Venda** |  | 6.44d | 2021-12-15 10:00 A | 2021-12-23 14:30 A |  | 100% |  |  |  | 23h | 23h | 3,450 | 3,450 |
| 56 | 1.1.6.2.1.1.1 | Implementação RFS Cadastrar Imóvel | manual | 0.31d | 2021-12-15 10:00 A | 2021-12-15 13:30 A | 46 | 100% |  |  | Robson; Rodrigo | 5h | 5h | 750 | 750 |
| 57 | 1.1.6.2.1.1.2 | Implementação RFS Consultar Imóvel | manual | 0.5d | 2021-12-17 09:00 A | 2021-12-20 14:30 A | 47 | 100% |  |  | Matheus; Rodrigo | 4h | 4h | 600 | 600 |
| 58 | 1.1.6.2.1.1.3 | Implementação RFS Alterar Imóvel | manual | 0.56d | 2021-12-20 09:00 A | 2021-12-23 14:30 A | 48 | 100% |  |  | Robson; Matheus | 7h | 7h | 1,050 | 1,050 |
| 59 | 1.1.6.2.1.1.4 | Implementação RFS Remover Imóvel | manual | 0.44d | 2021-12-20 13:30 A | 2021-12-20 17:00 A | 49 | 100% |  |  | Matheus; Rodrigo | 7h | 7h | 1,050 | 1,050 |
| 60 | 1.1.6.2.1.2 | **Implementação - Manter Venda** |  | 0.88d | 2021-12-14 13:30 | 2021-12-15 11:30 |  |  |  | 0d |  | 9h |  | 1,350 |  |
| 61 | 1.1.6.2.1.2.1 | Implementação RFS Cadastrar Venda | manual | 0.62d | 2021-12-14 13:30 | 2021-12-15 09:30 | 50 |  |  |  | Rodrigo | 5h |  | 750 |  |
| 62 | 1.1.6.2.1.2.2 | Implementação RFS Consultar Venda | manual | 0.25d | 2021-12-15 09:30 | 2021-12-15 11:30 | 51 |  |  |  | Matheus; Robson | 4h |  | 600 |  |
| 63 | 1.1.6.2.1.3 | **Teste - Manter Imóvel à Venda** |  | 6.12d | 2021-12-15 16:30 A | 2021-12-23 17:30 |  | 90% | 0.61d | 0d |  | 15h | 13.5h | 2,250 | 2,025 |
| 64 | 1.1.6.2.1.3.1 | Teste RFS Cadastrar Imóvel | manual | 0.5d | 2021-12-20 13:30 A | 2021-12-21 15:00 | 52 | 90% | 0.05d |  | João | 4h | 3.6h | 600 | 540 |
| 65 | 1.1.6.2.1.3.2 | Teste RFS Consultar Imóvel | manual | 0.38d | 2021-12-23 14:30 A | 2021-12-23 17:30 | 55 | 90% | 0.04d |  | João | 3h | 2.7h | 450 | 405 |
| 66 | 1.1.6.2.1.3.3 | Teste RFS Alterar Imóvel | manual | 0.5d | 2021-12-15 16:30 A | 2021-12-16 11:30 | 56 | 90% | 0.05d |  | João | 4h | 3.6h | 600 | 540 |
| 67 | 1.1.6.2.1.3.4 | Teste RFS Remover Imóvel | manual | 0.5d | 2021-12-20 14:30 A | 2021-12-21 09:30 | 57 | 90% | 0.05d |  | João | 4h | 3.6h | 600 | 540 |
| 68 | 1.1.6.2.1.4 | **Teste - Manter Corretor** |  | 3.19d | 2021-12-20 17:00 | 2021-12-24 09:30 |  |  |  | 0d |  | 7h |  | 1,050 |  |
| 69 | 1.1.6.2.1.4.1 | Teste RFS Cadastrar Venda | manual | 0.5d | 2021-12-23 14:30 | 2021-12-24 09:30 | 58 |  |  |  | João | 4h |  | 600 |  |
| 70 | 1.1.6.2.1.4.2 | Teste RFS Consultar Venda | manual | 0.12d | 2021-12-20 17:00 | 2021-12-20 18:00 | 59 |  |  |  | Robson; Matheus; Rodrigo | 3h |  | 450 |  |
| 71 | 1.1.6.3 | **Release 03** |  | 1.75d | 2021-12-24 09:00 | 2021-12-27 16:00 |  |  |  | 0d |  | 14h |  | 2,100 |  |
| 72 | 1.1.6.3.1 | **Implementação** |  | 1.75d | 2021-12-24 09:00 | 2021-12-27 16:00 |  |  |  | 0d |  | 14h |  | 2,100 |  |
| 73 | 1.1.6.3.1.1 | **Implementação - Relatório de Salários e Comissões** |  | 0.33d | 2021-12-24 09:00 | 2021-12-24 11:40 |  |  |  | 0d |  | 8h |  | 1,200 |  |
| 74 | 1.1.6.3.1.1.1 | Implementação RFS Relatório de Salários e Comissões | manual | 0.33d | 2021-12-24 09:00 | 2021-12-24 11:40 | 60 |  |  |  | Robson; Matheus; Rodrigo | 8h |  | 1,200 |  |
| 75 | 1.1.6.3.1.2 | **Teste - Relatório de Salários e Comissões** |  | 0.75d | 2021-12-27 09:00 | 2021-12-27 16:00 |  |  |  | 0d |  | 6h |  | 900 |  |
| 76 | 1.1.6.3.1.2.1 | Teste RFS Relatório de Salários e Comissões | manual | 0.75d | 2021-12-27 09:00 | 2021-12-27 16:00 | 61 |  |  |  | João | 6h |  | 900 |  |

| ID | WBS | Task | Type | Duration | Start | Finish | Predecessors | Total slack | Resources | Work | Cost |
| --- | --- | --- | --- | --- | --- | --- | --- | --- | --- | --- | --- |
| 77 | 1.1.6.4 | **Release 04** |  | 1.38d | 2021-12-28 09:00 | 2021-12-29 12:00 |  | 0d |  | 21h | 3,150 |
| 78 | 1.1.6.4.1 | **Implementação** |  | 1.38d | 2021-12-28 09:00 | 2021-12-29 12:00 |  | 0d |  | 21h | 3,150 |
| 79 | 1.1.6.4.1.1 | **Implementação - Relatório Gerencial** |  | 0.94d | 2021-12-28 09:00 | 2021-12-28 17:30 |  | 0d |  | 15h | 2,250 |
| 80 | 1.1.6.4.1.1.1 | Implementação RFS Relatório Gerencial | manual | 0.94d | 2021-12-28 09:00 | 2021-12-28 17:30 | 62 |  | Robson; Matheus | 15h | 2,250 |
| 81 | 1.1.6.4.1.2 | **Teste - Relatório Gerencial** |  | 0.38d | 2021-12-29 09:00 | 2021-12-29 12:00 |  | 0d |  | 6h | 900 |
| 82 | 1.1.6.4.1.2.1 | Teste RFS Relatório Gerencial | manual | 0.38d | 2021-12-29 09:00 | 2021-12-29 12:00 | 63 |  | Rodrigo; João | 6h | 900 |
| 83 | 1.1.7 | **Monitoramento e Controle** |  | 0.75d | 2021-12-30 09:00 | 2021-12-30 16:00 |  | 0d |  | 6h | 900 |
| 84 | 1.1.7.1 | Acompanhar Projeto | manual | 0.75d | 2021-12-30 09:00 | 2021-12-30 16:00 | 64 |  | Robson | 6h | 900 |
| 85 | 1.1.8 | **Gerência de Configuração** |  | 2.5d | 2021-12-30 09:00 | 2022-01-03 14:00 |  | 0d |  | 5h | 750 |
| 86 | 1.1.8.1 | Elaborar Branch | manual | 0.12d | 2021-12-30 09:00 | 2021-12-30 10:00 | 65 |  | Matheus | 1h | 150 |
| 87 | 1.1.8.2 | Realizar Merge da Branch para a Trunk | manual | 0.5d | 2022-01-03 09:00 | 2022-01-03 14:00 | 66 |  | Rodrigo | 4h | 600 |
| 88 | 1.1.9 | **Fase de Fechamento** |  | 6.98d | 2022-01-03 09:00 | 2022-01-11 17:50 |  | 0d |  | 12h | 1,283.33 |
| 89 | 1.1.9.1 | Fase 1 | manual | 0.12d | 2022-01-03 09:00 | 2022-01-03 10:00 | 67 |  | Robson; Cliente | 4h | 300 |
| 90 | 1.1.9.2 | Fase 2 | manual | 0.06d | 2022-01-06 09:00 | 2022-01-06 09:30 | 68 |  | Robson; Matheus; Rodrigo; Cliente | 4h | 450 |
| 91 | 1.1.9.3 | Fase 3 | manual | 1.98d | 2022-01-10 09:00 | 2022-01-11 17:50 | 69 |  | Robson; Matheus; Rodrigo; João; Cliente; GP Externo | 4h | 533.33 |
